Schedule from a web Gantt chart, 2022-07-12 to 2025-10-01.
Saturdays and Sundays are off

## Schedule

| ID | WBS | Task | Duration | Start | Finish | Predecessors | Complete | Status |
| --- | --- | --- | --- | --- | --- | --- | --- | --- |
| 2 | 1 | **Tasks Dependent on Function Team** | 414d | 2022-07-12 | 2024-02-09 |  | 2% |  |
| 3 | 1.1 | (User&eBao BA) BSD Signoff | 1d | 2024-01-01 | 2024-01-01 |  |  |  |
| 4 | 1.2 | (eBao AA) Table Design of Customization | 30d | 2024-01-01 | 2024-02-09 |  | 3% |  |
| 5 | 1.3 | (eBao BA&AD) Code/Master Table Configuration | 1d | 2022-07-12 | 2022-07-12 |  |  |  |
| 6 | 1.4 | (User&eBao BA) Product Set-up | 1d | 2022-07-12 | 2022-07-12 |  |  |  |
| 7 | 1.5 | (User&eBao BA) Product Mappping | 1d | 2022-07-12 | 2022-07-12 |  |  |  |
| 8 | 1.6 | (eBao Tester) Function Test | 1d | 2022-07-12 | 2022-07-12 |  |  |  |
| 9 | 1.7 | (User) Function UAT | 1d | 2022-07-12 | 2022-07-12 |  |  |  |
| 10 | 2 | **Data Migration** | 283d | 2024-09-02 | 2025-10-01 |  |  |  |
| 11 | 2.1 | **High Level of Mapping between Legacy & Template** | 1d | 2024-09-02 | 2024-09-02 |  |  |  |
| 12 | 2.1.1 | CHUBB-1 CAPSIL | 1d | 2024-09-02 | 2024-09-02 |  |  |  |
| 13 | 2.1.2 | System-6 | 1d | 2024-09-02 | 2024-09-02 |  |  |  |
| 14 | 2.1.3 | CAPSIL | 1d | 2024-09-02 | 2024-09-02 |  |  |  |
| 15 | 2.1.4 | IPAS | 1d | 2024-09-02 | 2024-09-02 |  |  |  |
| 16 | 2.2 | **Requirement Phase** | 11d | 2024-09-02 | 2024-09-16 |  |  |  |
| 17 | 2.2.1 | DC Approach/Scope/Plan | 5d | 2024-09-02 | 2024-09-06 |  |  |  |
| 18 | 2.2.2 | DC Solution | 4d | 2024-09-10 | 2024-09-13 | 21 |  | waiting |
| 19 | 2.2.3 | DC Approach and Scope Sign-Off | 1d | 2024-09-16 | 2024-09-16 | 18 |  | waiting |
| 20 | 2.3 | **Design Phase** | 46d | 2024-09-09 | 2024-11-11 |  |  | waiting |
| 21 | 2.3.1 | **Baseline Template Introduction** | 1d | 2024-09-09 | 2024-09-09 | 17 |  | waiting |
| 22 | 2.3.1.1 | Policy - policy/benefit master | 1d | 2024-09-09 | 2024-09-09 |  |  | waiting |
| 23 | 2.3.1.2 | Party | 1d | 2024-09-09 | 2024-09-09 |  |  | waiting |
| 24 | 2.3.1.3 | Policy - policy roles | 1d | 2024-09-09 | 2024-09-09 |  |  | waiting |
| 25 | 2.3.1.4 | Policy - others | 1d | 2024-09-09 | 2024-09-09 |  |  | waiting |
| 26 | 2.3.1.5 | ILP | 1d | 2024-09-09 | 2024-09-09 |  |  | waiting |
| 27 | 2.3.1.6 | Policy Account | 1d | 2024-09-09 | 2024-09-09 |  |  | waiting |
| 28 | 2.3.2 | Design - Template & Mapping | 25d | 2024-09-17 | 2024-10-21 | 19, 4 |  | waiting |
| 29 | 2.3.3 | Design - Validation Rule & Reconciliation | 15d | 2024-10-22 | 2024-11-11 | 28 |  | waiting |

| ID | WBS | Task | Duration | Start | Finish | Predecessors | Status |
| --- | --- | --- | --- | --- | --- | --- | --- |
| 30 | 2.4 | **(Client IT & eBao DC) Staging Data Delivery and Validation** | 100d | 2024-09-10 | 2025-01-27 |  |  |
| 31 | 2.4.1 | First Time Delivery of All Staging Tables | 40d | 2024-09-10 | 2024-11-04 | 21 | waiting |
| 32 | 2.4.2 | Pass Rate of Staging Data > 60% | 20d | 2024-11-05 | 2024-12-02 | 31 | waiting |
| 33 | 2.4.3 | Pass Rate of Staging Data > 90% | 20d | 2024-12-03 | 2024-12-30 | 32 | waiting |
| 34 | 2.4.4 | Pass Rate of Staging Data = 100% | 20d | 2024-12-31 | 2025-01-27 | 33 | waiting |
| 35 | 2.5 | **Development Phase** | 65d | 2024-11-12 | 2025-02-10 |  |  |
| 36 | 2.5.1 | DC Development - Coversion Script | 30d | 2024-11-12 | 2024-12-23 | 29 | waiting |
| 37 | 2.5.2 | DC Development - Validation Rules | 10d | 2024-12-24 | 2025-01-06 | 36 | waiting |
| 38 | 2.5.3 | DC Development - Reconciliation | 10d | 2025-01-07 | 2025-01-20 | 37 | waiting |
| 39 | 2.5.4 | DC Development - Trial Run with Real Data | 35d | 2024-12-24 | 2025-02-10 | 36 | waiting |
| 40 | 2.6 | **DM Test at eBao Side** | 90d | 2025-01-07 | 2025-05-12 |  |  |
| 41 | 2.6.1 | Target Data Validation | 30d | 2025-01-07 | 2025-02-17 | 37 | waiting |
| 42 | 2.6.2 | Target Data Reconciliation | 30d | 2025-02-18 | 2025-03-31 | 41 | waiting |
| 43 | 2.6.3 | Recalculation Verification | 40d | 2025-01-07 | 2025-03-03 | 37 | waiting |
| 44 | 2.6.4 | Batch Jobs Running on Migrated Data | 20d | 2025-03-04 | 2025-03-31 | 43 | waiting |
| 45 | 2.6.5 | **Function Test on Migrated Data (DVT)** | 60d | 2025-02-18 | 2025-05-12 |  |  |
| 46 | 2.6.5.1 | Function Test (Pass Rate > 70%) | 30d | 2025-02-18 | 2025-03-31 | 41 | waiting |
| 47 | 2.6.5.2 | Functional Test with Migrated Data (Pass Rate > 85%) | 15d | 2025-04-01 | 2025-04-21 | 46 | waiting |
| 48 | 2.6.5.3 | Functional Test with Migrated Data (Pass Rate > 95%) | 15d | 2025-04-22 | 2025-05-12 | 47 | waiting |
| 49 | 2.7 | **DM Test at Client Side** | 90d | 2025-04-01 | 2025-08-04 |  |  |
| 50 | 2.7.1 | (Client BA) Comparison Check on UI | 30d | 2025-04-01 | 2025-05-12 | 46 | waiting |
| 51 | 2.7.2 | (Client BA/IT) Pre DC UAT | 30d | 2025-04-01 | 2025-05-12 | 46 | waiting |
| 52 | 2.7.3 | (Client User) DC UAT | 60d | 2025-05-13 | 2025-08-04 | 48, 51 | waiting |
| 53 | 2.8 | **Go Live** | 14d | 2025-08-01 | 2025-08-20 |  |  |
| 54 | 2.8.1 | Rehearsal for CutOver | 12d | 2025-08-01 | 2025-08-18 | 52FS-2d | waiting |
| 55 | 2.8.2 | CutOver | 2d | 2025-08-19 | 2025-08-20 | 54 | waiting |
| 56 | 2.9 | Post-Go-Live Support | 30d | 2025-08-21 | 2025-10-01 | 55 | waiting |
